# Pfizer Continuum Project Plan

Schedule from MS Project, 2012-12-03 to 2013-11-29, A marks actual dates.

## Calendars

- Standard: Mon-Fri 08:00-12:00, 13:00-17:00; Sat-Sun off.

## Resources

| Resource |
| --- |
| Bala |
| Smita |
| Nelli |
| Paula |
| Hugh |
| Steve Matyas |
| Todd |
| Steve L |
| Sohal |
| Harsha |
| Naveen |
| BDA Team |
| Systems Team |
| QA3 |
| QA4 |
| QA5 |
| Vrushali |
| Max |
| VCDE |
| Anu |
| rushali |
| CTEP |
| caXchange |
| C3PR |
| caAERS |
| PSC |
| LV |
| BDA |
| "C3PR |
| Documentation |
| caGrid |
| QA |
| BAM |
| Edmond |
| NCI |
| SAIC-F |
| Web Team |
| Bill Dyer |
| CCTS Team |
| John S |
| Patrick |
| Architects |
| Christo |
| John |
| Rhett |
| Nellie |
| Steve |
| Kalpesh |
| David L |
| Stevel L |
| Kumar C |
| Gia |
| Wendy |
| Raj |
| Steve M |
| Lauren |
| Systems |
| CTRO |
| Hannes |
| SMEs |
| Gisele |
| Joe |
| CTRP Dev team |
| CBIIT |
| All |
| Analysts |
| TBD |
| Charles |
| ESST |
| Developers |
| Lisa |
| Christophe |
| Krishna |
| QA1 |
| QA2 |
| David |
| Security |
| Arch |
| Tech Leads |
| Paula B |
| Kalpana |
| KK |
| Abe |
| Kim |
| Vijay |
| CAT |
| George |
| Larry |
| Michael O |
| Resource 1 |
| Resource 2 |
| Resource3 |
| Resource 4 |
| Resource 5 |
| Gisele S |
| Dianne R |
| HR |
| NA |
| SL |
| ScenPro |
| 5AM |
| TP |
| EM |
| KE |
| JM |
| DL |
| Paul |
| Michael |
| Eilis |
| Team |
| Dev team |
| Ram P |
| NIH 508 team |
| Bryan |
| Bill D |
| Marina |
| Ye |
| Rashmi |
| Ann Wiley |
| Winston |
| QA* |
| Systems* |
| Sree |
| S |
| Systemss* |
| Mike |
| GQR |
| Juli |
| Sichen |

## Schedule

| ID | WBS | Task | Duration | Start | Finish | Predecessors | Complete | Remaining | Total slack | Constraint | Resources | Work | Actual work |
| --- | --- | --- | --- | --- | --- | --- | --- | --- | --- | --- | --- | --- | --- |
| 1 | 1 | **caArray** | 260d? | 2012-12-03 A | 2013-11-29 |  | 31% | 179.14d? | 0d | start no earlier than 2012-12-03 |  | 10159.6h | 2484.4h |
| 2 | 1.1 | **caArray 2.5.1** | 215d? | 2012-12-03 A | 2013-09-27 |  | 96% | 9.15d? | 45d |  |  | 2567.6h | 2484.4h |
| 3 | 1.1.1 | MILESTONE: PROJECT KICKOFF | 1d | 2012-12-06 A | 2012-12-06 A |  | 100% |  |  | start no earlier than 2012-12-06 |  |  |  |
| 4 | 1.1.2 | User Support - Rembrandt, etc. | 3d | 2012-12-03 A | 2012-12-05 A |  | 100% |  |  |  | Winston; Rashmi | 48h | 48h |
| 5 | 1.1.3 | Support Apache upgrade of all tiers | 5d | 2012-12-06 A | 2012-12-12 A | 4 | 100% |  |  |  | Rashmi | 40h | 40h |
| 6 | 1.1.4 | Review TRANSCEND UAT plan | 1d | 2012-12-13 A | 2012-12-13 A | 5 | 100% |  |  |  | Rashmi | 8h | 8h |
| 7 | 1.1.5 | Vacation and Team Member Unavailability | 10d | 2012-12-14 A | 2012-12-27 A | 6 | 100% |  |  |  | Winston; Rashmi | 160h | 160h |
| 8 | 1.1.6 | OSDI: Obtain GitHub accounts for all team members | 1d | 2012-12-28 A | 2012-12-28 A | 7 | 100% |  |  |  | Winston; Rashmi | 16h | 16h |
| 9 | 1.1.7 | OSDI: Do initial analysis, generate author list, fill out checklist | 3d | 2012-12-31 A | 2013-01-02 A | 8 | 100% |  |  |  | Winston; Rashmi | 48h | 48h |
| 10 | 1.1.8 | Rewrite PMP in EPLC format and update Project Plan | 2d | 2013-01-03 A | 2013-01-04 A | 9 | 100% |  |  |  | Rashmi | 16h | 16h |
| 11 | 1.1.9 | OSDI: Obtain access to NCIP channel in GitHub (Dependency) | 7d | 2012-12-31 A | 2013-01-08 A | 8 | 100% |  |  |  | Sree; Larry | 112h | 112h |
| 12 | 1.1.10 | OSDI: Generate a local git copy | 2d | 2013-01-03 A | 2013-01-04 A | 9 | 100% |  |  |  | Winston | 16h | 16h |
| 13 | 1.1.11 | OSDI: Split software and tools from docs and test data. | 3d | 2013-01-07 A | 2013-01-09 A | 12 | 100% |  |  |  | Winston | 24h | 24h |
| 14 | 1.1.12 | OSDI: Migrate local git copy to GitHub under NCIP | 4d | 2013-01-10 A | 2013-01-15 A | 11, 13 | 100% |  |  |  | Winston | 32h | 32h |
| 15 | 1.1.13 | OSDI: Change license/copyright text and merge into GitHub repo. | 2d | 2013-01-16 A | 2013-01-17 A | 14 | 100% |  |  |  | Winston | 16h | 16h |
| 16 | 1.1.14 | OSDI: Make build changes. (Remove svn dependencies, pull jboss from the tools directory, etc.) | 6d | 2013-01-18 A | 2013-01-25 A | 15 | 100% |  |  |  | Winston | 48h | 48h |
| 17 | 1.1.15 | OSDI: Update README and other documentation | 1d | 2013-02-04 A | 2013-02-04 A | 16 | 100% |  |  |  | Winston; Rashmi | 16h | 16h |
| 18 | 1.1.16 | Section 508 Compliance Improvements | 21d | 2013-02-05 A | 2013-03-05 A | 17 | 100% |  |  |  | Winston; Rashmi | 336h | 336h |
| 19 | 1.1.17 | OSDI: Work with the Systems team to update and test the Dev AHP build. | 4d | 2013-02-27 A | 2013-03-04 A | 16 | 100% |  |  |  | Winston; Systems | 64h | 64h |
| 20 | 1.1.18 | OSDI: Final test of AHP build on Dev tier | 1d | 2013-03-05 A | 2013-03-05 A | 19 | 100% |  |  |  | Winston; Systems; Rashmi | 24h | 24h |
| 21 | 1.1.19 | OSDI: Work with the Systems team to update/test AHP on QA/STAGE | 15d | 2013-03-06 A | 2013-03-26 A | 20 | 100% |  |  |  | Winston; Rashmi | 240h | 240h |
| 22 | 1.1.20 | Performance and other Bug Fixes | 20d | 2013-03-12 A | 2013-04-08 A | 20 | 100% |  |  | start no earlier than 2013-03-12 | Winston | 160h | 160h |
| 23 | 1.1.21 | OSDI: Work with the Systems team to update/test AHP on PROD,Curation,Training | 15d | 2013-03-27 A | 2013-04-16 A | 21 | 100% |  |  |  | Winston | 120h | 120h |
| 24 | 1.1.22 | **QA Tier** | 120d? | 2013-04-09 A | 2013-09-23 |  | 99% | 1.6d? | 42d |  |  | 951.6h | 938.8h |
| 25 | 1.1.22.1 | Automated Regression Testing on QA tier | 5d | 2013-04-09 A | 2013-04-15 A | 22 | 100% |  |  |  | QA* | 40h | 40h |
| 26 | 1.1.22.2 | Manual Regression Testing on QA tier | 4d | 2013-04-16 A | 2013-04-19 A | 25 | 100% |  |  |  | QA* | 32h | 32h |
| 27 | 1.1.22.3 | Installer Testing | 4d | 2013-04-22 A | 2013-04-25 A | 26 | 100% |  |  |  | QA* | 32h | 32h |
| 28 | 1.1.22.4 | QA reviews Section 508 compliance report | 2d | 2013-04-26 A | 2013-04-29 A | 27 | 100% |  |  |  | QA* | 16h | 16h |
| 29 | 1.1.22.5 | Appscan on QA tier | 20d | 2013-04-09 A | 2013-05-06 A | 22 | 100% |  |  |  | Systems* | 160h | 160h |
| 30 | 1.1.22.6 | Test Results Review and Reporting | 3d | 2013-05-07 A | 2013-05-09 A | 29, 25, 26, 27, 28 | 100% |  |  |  | QA* | 24h | 24h |
| 31 | 1.1.22.7 | Bug Fixes - Critical | 14d | 2013-05-10 A | 2013-06-04 A | 30 | 100% |  |  |  | Winston | 112h | 112h |
| 32 | 1.1.22.8 | QA critical fixes | 5d | 2013-06-04 A | 2013-06-11 A | 31 | 100% |  |  |  | QA* | 40h | 40h |
| 33 | 1.1.22.9 | Redo Appscan on QA tier | 10.7d | 2013-06-04 A | 2013-06-18 A | 31 | 100% |  |  | finish no earlier than 2013-06-18 | Systems* | 85.6h | 85.6h |
| 34 | 1.1.22.10 | QA RC3 (OpenSymphony File Reference Change) | 2d | 2013-06-19 A | 2013-06-20 A | 33 | 100% |  |  |  | Marina [12.5%] | 2h | 2h |

| ID | WBS | Task | Type | Duration | Start | Finish | Predecessors | Complete | Remaining | Total slack | Free slack | Constraint | Resources | Work | Actual work |
| --- | --- | --- | --- | --- | --- | --- | --- | --- | --- | --- | --- | --- | --- | --- | --- |
| 35 | 1.1.22.11 | **Struts patch** |  | 44d? | 2013-07-18 A | 2013-09-17 | 34 | 99% | 0.55d? | 45d |  |  |  | 384h | 379.2h |
| 36 | 1.1.22.11.1 | Upgrade to Struts 2.3.15.1 and fix anything that breaks |  | 2d | 2013-07-18 A | 2013-07-19 A |  | 100% |  |  |  | start no earlier than 2013-07-18 | Winston | 16h | 16h |
| 37 | 1.1.22.11.2 | Obtain permission to deploy to QA Tier | milestone | 0d | 2013-07-19 A | 2013-07-19 A | 36 | 100% |  |  |  |  | Mike |  |  |
| 38 | 1.1.22.11.3 | Deploy to the QA Tier |  | 1d | 2013-07-22 A | 2013-07-22 A | 37 | 100% |  |  |  |  | Marina | 8h | 8h |
| 39 | 1.1.22.11.4 | Smoke test |  | 3d | 2013-07-23 A | 2013-07-25 A | 38 | 100% |  |  |  |  | Marina | 24h | 24h |
| 40 | 1.1.22.11.5 | Run Section 508 scan and manage issues |  | 1d | 2013-07-25 A | 2013-07-25 A | 38 | 100% |  |  |  |  | Mike | 8h | 8h |
| 41 | 1.1.22.11.6 | Test local install |  | 2d | 2013-07-26 A | 2013-07-29 A | 39 | 100% |  |  |  |  | Marina | 16h | 16h |
| 42 | 1.1.22.11.7 | Test local upgrade |  | 2d | 2013-07-23 A | 2013-07-30 A | 41 | 100% |  |  |  |  | Marina | 16h | 16h |
| 43 | 1.1.22.11.8 | **Resolve issues idenfied by QA** |  | 28d? | 2013-07-30 A | 2013-09-05 A |  | 100% |  |  |  |  |  | 232h | 232h |
| 44 | 1.1.22.11.8.1 | Fix issues 2681, 2684 |  | 26d | 2013-07-30 A | 2013-09-03 A |  | 100% |  |  |  | start no earlier than 2013-07-30 | Winston | 208h | 208h |
| 45 | 1.1.22.11.8.2 | Retest issues |  | 2d | 2013-09-04 A | 2013-09-05 A | 44 | 100% |  |  |  |  | Marina | 16h | 16h |
| 46 | 1.1.22.11.8.3 | Re-run Section 508 scan |  | 1d? | 2013-09-04 A | 2013-09-04 A | 44 | 100% |  |  |  |  | Mike | 8h | 8h |
| 47 | 1.1.22.11.9 | Run security appscan |  | 5d | 2013-09-06 A | 2013-09-12 A | 45 | 100% |  |  |  |  | Systems | 40h | 40h |
| 48 | 1.1.22.11.10 | Update test report |  | 3d | 2013-09-13 A | 2013-09-17 | 39, 40, 47, 41, 42 | 80% | 0.6d | 45d | 0d |  | Marina | 24h | 19.2h |
| 49 | 1.1.22.12 | Request approval to deploy to STAGE and PROD | milestone | 0d | 2013-09-17 | 2013-09-17 | 48 |  |  | 45d | 0d |  | Marina |  |  |
| 50 | 1.1.22.13 | Test Results Review and Reporting |  | 1d | 2013-09-18 | 2013-09-18 | 49 |  |  | 45d | 0d |  | QA* | 8h |  |
| 51 | 1.1.22.14 | Approval to deploy to STAGE and PROD | milestone | 0d | 2013-09-18 | 2013-09-18 | 50 |  |  | 45d | 0d |  | QA* |  |  |
| 52 | 1.1.22.15 | Create release artifacts |  | 1d | 2013-09-23 A | 2013-09-23 A | 51 | 100% |  |  |  |  | Mike; Winston | 16h | 16h |
| 53 | 1.1.23 | **STAGE Tier** |  | 7d | 2013-09-18 A | 2013-09-27 |  | 3% | 6.77d | 45d |  |  |  | 48h | 1.6h |
| 54 | 1.1.23.1 | Request deployment to STAGE | milestone | 0d | 2013-09-18 | 2013-09-18 | 51 |  |  | 45d | 0d |  | Sichen |  |  |
| 55 | 1.1.23.2 | Deploy to STAGE |  | 1d | 2013-09-19 | 2013-09-19 | 54 |  |  | 45d | 0d |  | Systems* | 8h |  |
| 56 | 1.1.23.3 | API Testing |  | 2d | 2013-09-26 A | 2013-09-27 | 55 | 10% | 1.8d | 45d |  |  | Ye | 16h | 1.6h |
| 57 | 1.1.23.4 | Smoke Testing | milestone | 0d | 2013-09-19 | 2013-09-19 | 55 |  |  | 51d |  |  | Marina |  |  |
| 58 | 1.1.23.5 | Notify Columbia that caArray 2.5.1 is on STAGE | milestone | 0d | 2013-09-19 | 2013-09-19 | 55, 57 |  |  | 45d | 0d |  | Mike; Juli |  |  |
| 59 | 1.1.23.6 | Create QA Test Summary Report |  | 2d | 2013-09-20 | 2013-09-23 | 58 |  |  | 45d | 0d |  | Marina | 16h |  |
| 60 | 1.1.23.7 | Test Results Review and Reporting |  | 1d | 2013-09-24 | 2013-09-24 | 59 |  |  | 45d | 0d |  | QA* | 8h |  |

| ID | WBS | Task | Type | Duration | Start | Finish | Predecessors | Total slack | Free slack | Constraint | Resources | Work |
| --- | --- | --- | --- | --- | --- | --- | --- | --- | --- | --- | --- | --- |
| 61 | 1.1.24 | **PRODUCTION** |  | 3d | 2013-09-24 | 2013-09-27 |  | 45d | 0d |  |  | 24h |
| 62 | 1.1.24.1 | Request deployment to PRODUCTION | milestone | 0d | 2013-09-24 | 2013-09-24 | 60, 51 | 45d | 0d |  | GQR |  |
| 63 | 1.1.24.2 | Deploy to PRODUCTION |  | 1d | 2013-09-25 | 2013-09-25 | 62 | 45d | 0d |  | Systems* | 8h |
| 64 | 1.1.24.3 | Update product landing page |  | 0.5d | 2013-09-26 | 2013-09-26 | 63 | 46.5d |  |  |  |  |
| 65 | 1.1.24.4 | QA smoke tests PRODUCTION |  | 2d | 2013-09-26 | 2013-09-27 | 63 | 45d |  |  | QA* | 16h |
| 66 | 1.1.25 | MILESTONE: RELEASE 2.5.1 | milestone | 0d | 2013-09-27 | 2013-09-27 | 61 | 45d |  | start no earlier than 2012-01-09 |  |  |
| 67 | 1.2 | **caArray 2.5.2** |  | 232d | 2012-12-03 | 2013-10-22 |  | 28d |  |  |  | 936h |
| 68 | 1.2.1 | **Development** |  | 232d | 2012-12-03 | 2013-10-22 |  | 28d |  |  |  | 880h |
| 69 | 1.2.1.1 | **Address FISMA POAM issues** |  | 70d | 2013-06-19 | 2013-09-24 |  | 28d |  |  |  | 540h |
| 70 | 1.2.1.1.1 | Non-development support (documentation, discussion, etc) |  | 50d | 2013-06-19 | 2013-08-27 |  | 68d |  | start no earlier than 2013-06-19 | Winston [5%]; Mike [5%] | 40h |
| 71 | 1.2.1.1.2 | Development |  | 50d | 2013-07-03 | 2013-09-10 |  | 18d | 0d | start no earlier than 2013-07-03 | Winston | 400h |
| 72 | 1.2.1.1.3 | QA |  | 50d | 2013-07-17 | 2013-09-24 |  | 48d |  | start no earlier than 2013-07-17 | Marina [25%] | 100h |
| 73 | 1.2.1.2 | **Upgrade CSM/UPT** |  | 60d | 2013-07-03 | 2013-09-24 |  | 28d |  |  |  | 60h |
| 74 | 1.2.1.2.1 | Development |  | 10d | 2013-07-03 | 2013-07-16 |  | 38d | 0d | start no earlier than 2013-07-03 | Winston [50%] | 40h |
| 75 | 1.2.1.2.2 | QA |  | 10d | 2013-09-11 | 2013-09-24 | 71 | 28d | 0d | start no earlier than 2013-07-17 | Marina [25%] | 20h |
| 76 | 1.2.1.3 | **Fix bugs/address TRANSCEND issues** |  | 70d | 2013-07-17 | 2013-10-22 |  | 28d |  |  |  | 200h |
| 77 | 1.2.1.3.1 | Development |  | 20d | 2013-07-17 | 2013-08-13 | 74 | 38d | 20d | start no earlier than 2013-07-03 | Winston | 160h |
| 78 | 1.2.1.3.2 | QA |  | 20d | 2013-09-25 | 2013-10-22 | 75 | 28d |  | start no earlier than 2013-07-17 | Marina [25%] | 40h |
| 79 | 1.2.1.4 | Support Gforge Retirement |  | 5d | 2012-12-03 | 2012-12-07 |  | 253d | 0d |  | Winston; Mike | 80h |
| 80 | 1.2.2 | MILESTONE: EPLC REVIEW (as needed) |  | 2d | 2012-12-10 | 2012-12-11 | 79 | 253d |  | start no earlier than 2012-01-09 | Winston; Mike | 32h |
| 81 | 1.2.3 | Cut release candidate | milestone | 0d | 2013-09-10 | 2013-09-10 | 71, 74, 77 | 18d | 0d |  | Winston |  |
| 82 | 1.2.4 | Request approval to deploy to QA | milestone | 0d | 2013-09-10 | 2013-09-10 | 81 | 18d | 0d |  | Mike |  |
| 83 | 1.2.5 | Test Results Review and Reporting |  | 3d | 2013-09-11 | 2013-09-13 | 82 | 18d | 0d |  | QA* | 24h |
| 84 | 1.2.6 | Approval to deploy to QA | milestone | 0d | 2013-09-13 | 2013-09-13 | 83 | 18d | 0d |  | GQR |  |

| ID | WBS | Task | Type | Duration | Start | Finish | Predecessors | Total slack | Free slack | Constraint | Resources | Work |
| --- | --- | --- | --- | --- | --- | --- | --- | --- | --- | --- | --- | --- |
| 85 | 1.3 | **QA Tier** |  | 15d? | 2013-09-16 | 2013-10-04 |  | 18d |  |  |  | 288h |
| 86 | 1.3.1 | Deploy to QA tier |  | 1d? | 2013-09-16 | 2013-09-16 | 84 | 18d | 0d |  |  |  |
| 87 | 1.3.2 | **Regression Testing on QA tier** |  | 9d | 2013-09-17 | 2013-09-27 |  | 18d | 0d |  | Marina | 144h |
| 88 | 1.3.2.1 | Automated testing |  | 5d | 2013-09-17 | 2013-09-23 | 86 | 18d | 0d |  | Marina | 40h |
| 89 | 1.3.2.2 | Manual testing |  | 4d | 2013-09-24 | 2013-09-27 | 88 | 18d |  |  | Marina | 32h |
| 90 | 1.3.3 | Installer Testing |  | 4d | 2013-09-17 | 2013-09-20 | 86 | 23d | 5d |  | Marina | 32h |
| 91 | 1.3.4 | Section 508 testing on QA tier |  | 2d | 2013-09-17 | 2013-09-18 | 86 | 25d | 7d |  | Mike | 16h |
| 92 | 1.3.5 | Appscan on QA tier |  | 5d | 2013-09-17 | 2013-09-23 | 86 | 22d | 4d |  | Systems* | 40h |
| 93 | 1.3.6 | Request approval to deploy to STAGE | milestone | 0d | 2013-09-27 | 2013-09-27 | 92, 87, 90, 91 | 18d | 0d |  | Marina |  |
| 94 | 1.3.7 | Test Results Review and Reporting |  | 3d | 2013-09-30 | 2013-10-02 | 93 | 18d | 0d |  | QA* | 24h |
| 95 | 1.3.8 | Approval to deploy to STAGE | milestone | 0d | 2013-10-02 | 2013-10-02 | 94 | 18d | 0d |  | QA* |  |
| 96 | 1.3.9 | Create release artifacts |  | 2d | 2013-10-03 | 2013-10-04 | 95 | 40d |  |  | Mike; Winston | 32h |
| 97 | 1.4 | **STAGE Tier** |  | 19d | 2013-10-02 | 2013-10-29 |  | 18d |  |  |  | 184h |
| 98 | 1.4.1 | Request deployment to STAGE | milestone | 0d | 2013-10-02 | 2013-10-02 | 95 | 18d | 0d |  | Marina; Mike |  |
| 99 | 1.4.2 | Deploy to STAGE |  | 3d | 2013-10-03 | 2013-10-07 | 98 | 18d | 0d |  | Systems* | 24h |
| 100 | 1.4.3 | Automated regression testing |  | 4d | 2013-10-08 | 2013-10-11 | 99 | 24d | 6d |  | Marina | 32h |
| 101 | 1.4.4 | API testing |  | 2d | 2013-10-08 | 2013-10-09 | 99 | 26d | 8d |  |  |  |
| 102 | 1.4.5 | Request security appscan | milestone | 0d | 2013-10-07 | 2013-10-07 | 99 | 18d | 0d |  | Marina; Mike |  |
| 103 | 1.4.6 | Run security appscan |  | 10d | 2013-10-08 | 2013-10-21 | 102 | 18d | 0d |  | Systems* | 80h |
| 104 | 1.4.7 | Create QA Test Summary Report |  | 3d | 2013-10-22 | 2013-10-24 | 103, 100, 101 | 18d | 0d |  | Marina | 24h |
| 105 | 1.4.8 | Request approval to deploy to PROD | milestone | 0d | 2013-10-24 | 2013-10-24 | 104 | 18d | 0d |  | Marina |  |
| 106 | 1.4.9 | Test Results Review and Reporting |  | 3d | 2013-10-25 | 2013-10-29 | 105 | 18d | 0d |  | QA* | 24h |
| 107 | 1.4.10 | Approval to deploy to PROD | milestone | 0d | 2013-10-29 | 2013-10-29 | 106 | 18d | 0d |  | GQR |  |
| 108 | 1.5 | **PRODUCTION** |  | 5d? | 2013-10-30 | 2013-11-05 |  | 18d | 0d |  |  | 40h |
| 109 | 1.5.1 | Request deployment to PRODUCTION |  | 1d? | 2013-10-30 | 2013-10-30 | 107 | 18d | 0d |  | GQR | 8h |
| 110 | 1.5.2 | Deploy to PRODUCTION |  | 3d | 2013-10-31 | 2013-11-04 | 109 | 18d | 0d |  | Systems* | 24h |
| 111 | 1.5.3 | Update product landing page |  | 0.5d | 2013-11-05 | 2013-11-05 | 110 | 18.5d |  |  |  |  |
| 112 | 1.5.4 | QA smoke tests PRODUCTION |  | 1d | 2013-11-05 | 2013-11-05 | 110 | 18d |  |  | QA* | 8h |
| 113 | 1.6 | MILESTONE: RELEASE 2.5.2 | milestone | 0d | 2013-11-05 | 2013-11-05 | 108 | 18d |  | start no earlier than 2012-01-09 |  |  |
| 114 | 1.7 | User Support |  | 256d | 2012-12-07 | 2013-11-29 | 3 | 0d |  |  | Winston; Rashmi; Mike | 6144h |
